# 2011 Trading System Project

Schedule from MS Project, 2011-03-01 to 2011-12-30, A marks actual dates.

## Calendars

- Standard: Mon-Fri 08:00-12:00, 13:00-17:00; Sat-Sun off.

## Resources

| Resource |
| --- |
| Vu Quoc Dung |
| Nguyen Hai Quan |

## Schedule

| ID | WBS | Task | Duration | Start | Finish | Predecessors | Complete | Remaining | Total slack | Constraint | Resources | Work | Actual work |
| --- | --- | --- | --- | --- | --- | --- | --- | --- | --- | --- | --- | --- | --- |
| 1 | 1 | **Product Development** | 219d? | 2011-03-01 A | 2011-12-30 |  | 32% | 148.99d? | 0d |  |  | 1840h | 688h |
| 2 | 1.1 | **Code study** | 27d | 2011-03-06 A | 2011-04-12 A |  | 100% |  |  |  |  | 168h | 168h |
| 3 | 1.1.1 | Chart study | 7d | 2011-03-06 A | 2011-03-15 A |  | 100% |  |  |  | Vu Quoc Dung | 56h | 56h |
| 4 | 1.1.2 | Ta-lib study | 7d | 2011-04-04 A | 2011-04-12 A |  | 100% |  |  |  | Vu Quoc Dung; Nguyen Hai Quan | 112h | 112h |
| 5 | 1.2 | Database design | 25d? | 2011-03-01 A | 2011-04-04 A |  | 100% |  |  | finish no earlier than 2011-04-04 | Vu Quoc Dung; Nguyen Hai Quan | 400h | 400h |
| 6 | 1.3 | Framework prototype | 21d | 2011-03-28 A | 2011-04-25 A |  | 100% |  |  | start no earlier than 2011-03-28 |  |  |  |
| 7 | 1.4 | **Development** | 73d? | 2011-08-24 A | 2011-12-02 | 6 | 15% | 62.15d? | 20d |  |  | 192h |  |
| 8 | 1.4.1 | **Interface development** | 4d? | 2011-08-24 | 2011-08-29 |  |  |  | 89d |  |  |  |  |
| 9 | 1.4.1.1 | New chart | 4d? | 2011-08-24 | 2011-08-29 |  |  |  | 89d | start no earlier than 2011-08-24 |  |  |  |
| 10 | 1.4.2 | Indicator development | 9d? | 2011-08-24 A | 2011-09-05 A |  | 100% |  |  | start no earlier than 2011-08-24 |  |  |  |
| 11 | 1.4.3 | Stock ranking | 1d? | 2011-08-24 A | 2011-08-24 A |  | 100% |  |  | start no earlier than 2011-08-24 |  |  |  |
| 12 | 1.4.4 | Strategy Ranking | 1d? | 2011-08-24 A | 2011-08-24 A |  | 100% |  |  | start no earlier than 2011-08-24 |  |  |  |
| 13 | 1.4.5 | Data input | 28d? | 2011-08-24 | 2011-09-30 |  |  |  | 65d | start no earlier than 2011-08-24 |  |  |  |
| 14 | 1.4.6 | Chỉnh sửa giao diện | 7d | 2011-09-26 | 2011-10-04 |  |  |  | 63d | start no earlier than 2011-09-26 |  |  |  |
| 15 | 1.4.7 | webservices | 24d? | 2011-11-01 | 2011-12-02 |  |  |  | 20d | start no earlier than 2011-11-01 | Vu Quoc Dung | 192h |  |
| 16 | 1.5 | Strategy Development | 135d | 2011-06-27 A | 2011-12-30 |  | 11% | 120d | 0d | finish no earlier than 2011-12-30 | Nguyen Hai Quan | 1080h | 120h |
| 17 | 2 | **Buzz by Testing** | 1d? | 2011-04-04 | 2011-04-04 |  |  |  | 194d |  |  |  |  |
| 18 | 2.1 | Insider testing | 1d? | 2011-04-04 | 2011-04-04 |  |  |  | 194d |  |  |  |  |
| 19 | 2.2 | Strategic testing | 1d? | 2011-04-04 | 2011-04-04 |  |  |  | 194d |  |  |  |  |
| 20 | 3 | **Marketing** | 176d? | 2011-04-04 | 2011-12-05 |  |  |  | 19d |  |  |  |  |
| 21 | 3.1 | Ten cong ty | 6d? | 2011-11-21 | 2011-11-28 |  |  |  | 24d | start no earlier than 2011-11-21 |  |  |  |
| 22 | 3.2 | Logo, slogan, mau sac | 11d? | 2011-11-21 | 2011-12-05 |  |  |  | 19d | start no earlier than 2011-11-21 |  |  |  |
| 23 | 3.3 | Website | 11d? | 2011-11-21 | 2011-12-05 |  |  |  | 19d | start no earlier than 2011-11-21 |  |  |  |
| 24 | 3.4 | Catalogue | 1d? | 2011-04-04 | 2011-04-04 |  |  |  | 194d |  |  |  |  |
| 25 | 3.5 | Presentation | 1d? | 2011-04-04 | 2011-04-04 |  |  |  | 194d |  |  |  |  |
| 26 | 4 | User guide | 1d? | 2011-04-04 | 2011-04-04 |  |  |  | 194d |  |  |  |  |
| 27 | 5 | Thành lập công ty | 1d? | 2011-04-04 | 2011-04-04 |  |  |  | 194d |  |  |  |  |
| 28 | 6 | Luật pháp công ty | 1d? | 2011-04-04 | 2011-04-04 |  |  |  | 194d |  |  |  |  |

Notes:
- 5: V2 updated

| ID | WBS | Task | Duration | Start | Finish | Total slack |
| --- | --- | --- | --- | --- | --- | --- |
| 29 | 7 | **Finance** | 1d? | 2011-04-04 | 2011-04-04 | 194d |
| 30 | 7.1 | Xác định nguồn vốn và cơ cấu | 1d? | 2011-04-04 | 2011-04-04 | 194d |
| 31 | 7.2 | Xác định cashflow của dự án | 1d? | 2011-04-04 | 2011-04-04 | 194d |
| 32 | 8 | Nhà tài trợ của dự án | 1d? | 2011-04-04 | 2011-04-04 | 194d |
| 34 | 9 | **Xây dựng mạng lưới khách hàng+ đối tác** | 1d? | 2011-04-04 | 2011-04-04 | 194d |
| 35 | 9.1 | Khach hang Stocks | 1d? | 2011-04-04 | 2011-04-04 | 194d |
| 36 | 9.2 | Khach hang Vang | 1d? | 2011-04-04 | 2011-04-04 | 194d |
| 37 | 9.3 | Khach hang Forex | 1d? | 2011-04-04 | 2011-04-04 | 194d |
| 38 | 9.4 | **Đối tác đào tạo** | 1d? | 2011-04-04 | 2011-04-04 | 194d |
| 39 | 9.4.1 | Trường+ trung tâm giảng dạy | 1d? | 2011-04-04 | 2011-04-04 | 194d |
| 40 | 9.5 | Đối tác nhà nước | 1d? | 2011-04-04 | 2011-04-04 | 194d |
| 41 | 9.6 | Đối tác quỹ tài chính + ngân hàng | 1d? | 2011-04-04 | 2011-04-04 | 194d |
| 42 | 9.7 | Đối tác công ty | 1d? | 2011-04-04 | 2011-04-04 | 194d |
| 43 | 9.8 | Đối tác Internet + Social Network | 1d? | 2011-04-04 | 2011-04-04 | 194d |
