# Quantum 2012 Management

Schedule from MS Project, 2011-03-01 to 2012-09-04, status date 2012-06-02, 2 hours a day, costs in $, A marks actual dates.

## Calendars

- Standard: Mon-Fri 08:00-12:00, 13:00-17:00; Sat-Sun off. Exceptions (off unless hours are given): 2012-06-02 08:00-12:00, 13:00-17:00.

## Resources

| Resource | Group | Rate |
| --- | --- | --- |
| Quan Nguyen | PM | 10 |
| Dung Vu | TA | 10 |
| Tuan Nguyen | DEV | 3 |
| Dat Nguyen | DEV | 1 |
| Huy | DEV | 1 |
| Duy Anh | DEV | 1 |
| Thuy | DEV | 1 |

## Schedule

| ID | WBS | Task | Duration | Start | Finish | Predecessors | Complete | Remaining | Total slack | Free slack | Constraint | Resources | Work | Actual work | Cost | Actual cost |
| --- | --- | --- | --- | --- | --- | --- | --- | --- | --- | --- | --- | --- | --- | --- | --- | --- |
| 1 | 1 | **Quantum Desktop Version** | 342d? | 2012-03-01 A | 2012-06-27 |  | 25% | 256.46d? | 198d |  |  |  | 508.4h | 106.4h | 3,162.81 | 1,192.8 |
| 2 | 1.1 | **New Development** | 342d? | 2012-03-01 A | 2012-06-27 |  | 19% | 275.78d? | 198d |  |  |  | 410.4h | 67.2h | 2,430.81 | 632.8 |
| 3 | 1.1.1 | Market Summary | 28d? | 2012-03-01 A | 2012-03-09 A |  | 100% |  |  |  | finish no earlier than 2012-03-09 | Dung Vu; Tuan Nguyen [10%]; Quan Nguyen [10%] | 67.2h | 67.2h | 632.8 | 632.8 |
| 4 | 1.1.2 | Documentation Code | 28d? | 2012-06-06 | 2012-06-14 | 3 |  |  | 198d | 0d | start no earlier than 2012-06-06 | Tuan Nguyen [50%]; Dung Vu | 56h |  | 364 |  |
| 5 | 1.1.3 | Gán Strategy cho từng Stocks - liên quan đến Alerts | 4d? | 2012-06-15 | 2012-06-15 | 4 |  |  | 198d | 0d |  | Quan Nguyen [50%]; Dung Vu | 12h |  | 120 |  |
| 6 | 1.1.4 | Custom Alerts | 20d? | 2012-06-18 | 2012-06-22 | 5 |  |  | 198d | 0d |  | Dung Vu; Quan Nguyen [50%] | 60h |  | 600 |  |
| 7 | 1.1.5 | Vẽ Chart Technical | 10d? | 2012-06-25 | 2012-06-27 | 6 |  |  | 198d |  |  | Dung Vu | 20h |  | 200 |  |
| 8 | 1.1.6 | **Reporting & Email Module** | 18.61d? | 2012-06-18 | 2012-06-22 |  |  |  | 209.4d |  |  |  | 99.2h |  | 274.01 |  |
| 9 | 1.1.6.1 | Analysis | 18.61d? | 2012-06-18 | 2012-06-22 |  |  |  | 209.4d |  | start no earlier than 2012-06-18 | Dung Vu [20%]; Quan Nguyen [10%]; Thuy; Duy Anh; Tuan Nguyen [30%] | 16h |  | 85.21 |  |
| 10 | 1.1.6.2 | Design | 4d? | 2012-06-18 | 2012-06-18 |  |  |  | 224d |  | start no earlier than 2012-06-18 | Thuy; Duy Anh; Tuan Nguyen [30%]; Dung Vu [20%]; Quan Nguyen [10%] | 20.8h |  | 47.2 |  |
| 11 | 1.1.6.3 | Implementation | 4d? | 2012-06-18 | 2012-06-18 |  |  |  | 224d |  | start no earlier than 2012-06-18 | Thuy; Duy Anh; Tuan Nguyen [30%]; Dung Vu [20%]; Quan Nguyen [10%] | 20.8h |  | 47.2 |  |
| 12 | 1.1.6.4 | Testing | 4d? | 2012-06-18 | 2012-06-18 |  |  |  | 224d |  | start no earlier than 2012-06-18 | Thuy; Duy Anh; Tuan Nguyen [30%]; Dung Vu [20%]; Quan Nguyen [10%] | 20.8h |  | 47.2 |  |
| 13 | 1.1.6.5 | Integration | 4d? | 2012-06-18 | 2012-06-18 |  |  |  | 224d |  | start no earlier than 2012-06-18 | Thuy; Duy Anh; Tuan Nguyen [30%]; Dung Vu [20%]; Quan Nguyen [10%] | 20.8h |  | 47.2 |  |
| 14 | 1.1.7 | **Data Module** | 20d? | 2012-06-18 | 2012-06-22 |  |  |  | 208d |  |  |  | 96h |  | 240 |  |
| 15 | 1.1.7.1 | Analysis | 4d? | 2012-06-18 | 2012-06-18 |  |  |  | 208d | 0d | start no earlier than 2012-06-18 | Dat Nguyen; Huy; Dung Vu [30%]; Quan Nguyen [10%] | 19.2h |  | 48 |  |
| 16 | 1.1.7.2 | Design | 4d? | 2012-06-19 | 2012-06-19 | 15 |  |  | 208d | 0d |  | Dat Nguyen; Huy; Dung Vu [30%]; Quan Nguyen [10%] | 19.2h |  | 48 |  |
| 17 | 1.1.7.3 | Implementation | 4d? | 2012-06-20 | 2012-06-20 | 16 |  |  | 208d | 0d |  | Dat Nguyen; Huy; Dung Vu [30%]; Quan Nguyen [10%] | 19.2h |  | 48 |  |
| 18 | 1.1.7.4 | Testing | 4d? | 2012-06-21 | 2012-06-21 | 17 |  |  | 208d | 0d |  | Dat Nguyen; Huy; Dung Vu [30%]; Quan Nguyen [10%] | 19.2h |  | 48 |  |
| 19 | 1.1.7.5 | Integration | 4d? | 2012-06-22 | 2012-06-22 | 18 |  |  | 208d |  |  | Dat Nguyen; Huy; Dung Vu [30%]; Quan Nguyen [10%] | 19.2h |  | 48 |  |
| 21 | 1.2 | **Bug fix** | 48d? | 2012-06-01 A | 2012-06-15 |  | 47% | 25.45d? | 224d | 0d |  |  | 86h | 39.2h | 668 | 560 |
| 22 | 1.2.1 | XP/2003 installation | 28d? | 2012-06-01 A | 2012-06-08 |  | 70% | 8.4d? | 244d |  | start no earlier than 2012-06-01 | Dung Vu | 56h | 39.2h | 560 | 560 |
| 23 | 1.2.2 | Data Correction for VNIndex | 13.71d? | 2012-06-12 | 2012-06-15 |  |  |  | 224d |  | finish no earlier than 2012-06-15 | Dung Vu [9.4%]; Tuan Nguyen | 30h |  | 108 |  |
| 25 | 1.3 | **Optimization** | 4d? | 2012-06-18 | 2012-06-18 | 21 |  |  | 224d |  |  |  | 12h |  | 64 |  |
| 26 | 1.3.1 | Webservices connexion | 4d? | 2012-06-18 | 2012-06-18 |  |  |  | 224d |  | start no earlier than 2012-06-06 | Dung Vu [50%]; Tuan Nguyen | 12h |  | 64 |  |

Notes:
- 4: Document vào code

| ID | WBS | Task | Duration | Start | Finish | Predecessors | Complete | Remaining | Total slack | Constraint |
| --- | --- | --- | --- | --- | --- | --- | --- | --- | --- | --- |
| 28 | 2 | **Quantum Web/Phone Version** | 444d? | 2012-04-03 A | 2012-09-03 |  | 92% | 36.24d? | 4d |  |
| 29 | 2.1 | **Web Interface** | 196d? | 2012-04-03 A | 2012-06-07 |  | 96% | 8.34d? | 252d |  |
| 30 | 2.1.1 | Web design by inside team | 180d? | 2012-04-03 A | 2012-06-02 A |  | 100% |  |  | finish no earlier than 2012-06-02 |
| 31 | 2.1.2 | Web approved by PM | 8d | 2012-06-06 | 2012-06-07 | 30 |  |  | 252d | start no earlier than 2012-06-06 |
| 33 | 2.2 | **Iphone design** | 4d? | 2012-09-03 | 2012-09-03 |  |  |  | 4d |  |
| 34 | 2.2.1 | I phone draft design | 4d? | 2012-09-03 | 2012-09-03 |  |  |  | 4d | start no earlier than 2012-09-03 |
| 35 | 2.2.2 | I phone approved by PM | 4d? | 2012-09-03 | 2012-09-03 |  |  |  | 4d | start no earlier than 2012-09-03 |
| 38 | 3 | **Market Development** | 1192d? | 2011-03-01 A | 2012-04-19 |  | 6% | 1115.19d? | 396d |  |
| 39 | 3.1 | **Potential Stock Clients** | 1156d? | 2011-03-01 A | 2012-04-06 |  | 11% | 1028.2d? | 432d |  |
| 40 | 3.1.1 | **Funds** | 108d? | 2012-03-01 A | 2012-04-06 |  | 12% | 94.82d? | 432d |  |
| 41 | 3.1.1.1 | Jaccar | 20d? | 2012-04-02 | 2012-04-06 |  |  |  | 432d | start no earlier than 2012-04-02 |
| 42 | 3.1.1.2 | TIM | 20d? | 2012-03-26 A | 2012-03-30 |  | 30% | 14d? | 452d | start no earlier than 2012-03-26 |
| 43 | 3.1.1.3 | Tiger | 20d? | 2012-03-19 A | 2012-03-23 |  | 30% | 14d? | 472d | start no earlier than 2012-03-19 |
| 44 | 3.1.1.4 | VFA ?? | 20d? | 2012-03-26 | 2012-03-30 |  |  |  | 452d | start no earlier than 2012-03-26 |
| 45 | 3.1.1.5 | KITMC?? | 12d? | 2012-03-19 | 2012-03-21 |  |  |  | 480d | start no earlier than 2012-03-19 |
| 46 | 3.1.1.6 | Quy nuoc ngoai - ETF ?? | 4d? | 2012-03-01 | 2012-03-01 |  |  |  | 536d | start no earlier than 2012-03-01 |
| 47 | 3.1.1.7 | Dragon Capital | 4d? | 2012-04-01 A | 2012-04-02 |  | 5% | 3.8d? | 448d |  |
| 49 | 3.1.2 | **Securities company** | 1136d? | 2011-03-01 A | 2012-03-30 |  | 10% | 1021.44d? | 452d |  |
| 50 | 3.1.2.1 | A Au | 18d? | 2012-03-26 A | 2012-03-30 |  | 30% | 12.6d? | 454d | start no earlier than 2012-03-26 |
| 51 | 3.1.2.2 | Rong Viet | 18d? | 2012-03-26 A | 2012-03-30 |  | 30% | 12.6d? | 454d | start no earlier than 2012-03-26 |
| 52 | 3.1.2.3 | Mirae | 18d? | 2012-03-26 A | 2012-03-30 |  | 5% | 17.1d? | 454d | start no earlier than 2012-03-26 |
| 53 | 3.1.2.4 | VietCap Securities?? | 20d? | 2012-03-26 | 2012-03-30 |  |  |  | 452d | start no earlier than 2012-03-26 |
| 54 | 3.1.2.5 | KIMENG ?? | 4d? | 2011-03-01 | 2011-03-01 |  |  |  | 1584d |  |
| 55 | 3.1.2.6 | Phu Hung ?? | 4d? | 2011-03-01 A | 2011-03-01 |  | 5% | 3.8d? | 1584d |  |
| 56 | 3.1.2.7 | HSC | 4d? | 2011-03-01 | 2011-03-01 |  |  |  | 1584d |  |
| 57 | 3.1.2.8 | FPTS | 4d? | 2011-03-01 | 2011-03-01 |  |  |  | 1584d |  |
| 58 | 3.1.2.9 | SBS | 4d? | 2011-03-01 | 2011-03-01 |  |  |  | 1584d |  |
| 59 | 3.1.2.10 | ACBS | 4d? | 2011-03-01 | 2011-03-01 |  |  |  | 1584d |  |
| 60 | 3.1.2.11 | SSI | 4d? | 2011-03-01 | 2011-03-01 |  |  |  | 1584d |  |
| 61 | 3.1.2.12 | VNDirect | 4d? | 2011-03-01 | 2011-03-01 |  |  |  | 1584d |  |
| 62 | 3.1.2.13 | PhuGia | 4d? | 2011-03-01 | 2011-03-01 |  |  |  | 1584d |  |
| 63 | 3.1.2.14 | BVS | 4d? | 2011-03-01 | 2011-03-01 |  |  |  | 1584d |  |
| 64 | 3.1.2.15 | TLS | 4d? | 2011-03-01 | 2011-03-01 |  |  |  | 1584d |  |

Notes:
- 38: Ai sẽ chịu trách nhiệm ? / Vai trň gě của người nŕy
- 54: gặp đội môi giới vŕ phân tích

| ID | WBS | Task | Duration | Start | Finish | Total slack | Constraint |
| --- | --- | --- | --- | --- | --- | --- | --- |
| 66 | 3.2 | **End Users Stock/Gold** | 28d | 2011-03-01 | 2011-03-09 | 1560d |  |
| 67 | 3.2.1 | Chiến lược Branding/Marketing | 28d | 2011-03-01 | 2011-03-09 | 1560d |  |
| 69 | 3.3 | **Gold Brokerage** | 4d? | 2011-03-01 | 2011-03-01 | 1584d |  |
| 70 | 3.3.1 | AISTrading | 4d? | 2011-03-01 | 2011-03-01 | 1584d |  |
| 71 | 3.3.2 | Mekong | 4d? | 2011-03-01 | 2011-03-01 | 1584d |  |
| 73 | 3.4 | **Partners** | 1192d? | 2011-03-01 | 2012-04-19 | 396d |  |
| 74 | 3.4.1 | **Universities & Centers** | 4d? | 2011-03-01 | 2011-03-01 | 1584d |  |
| 75 | 3.4.1.1 | KHTN | 4d? | 2011-03-01 | 2011-03-01 | 1584d |  |
| 76 | 3.4.1.2 | UHL | 4d? | 2011-03-01 | 2011-03-01 | 1584d |  |
| 77 | 3.4.1.3 | Ngoai Thuong ?? | 4d? | 2011-03-01 | 2011-03-01 | 1584d |  |
| 78 | 3.4.1.4 | Kinh Te ?? | 4d? | 2011-03-01 | 2011-03-01 | 1584d |  |
| 79 | 3.4.1.5 | Ngan Hang ?? | 4d? | 2011-03-01 | 2011-03-01 | 1584d |  |
| 80 | 3.4.1.6 | Fgates | 4d? | 2011-03-01 | 2011-03-01 | 1584d |  |
| 81 | 3.4.1.7 | Doanh Chu ?? | 4d? | 2011-03-01 | 2011-03-01 | 1584d |  |
| 82 | 3.4.2 | **Media** | 96d? | 2012-03-19 | 2012-04-19 | 396d |  |
| 83 | 3.4.2.1 | SGGP | 4d? | 2012-03-19 | 2012-03-19 | 488d | start no earlier than 2012-03-19 |
| 84 | 3.4.2.2 | Thanh Nien | 4d? | 2012-03-19 | 2012-03-19 | 488d | start no earlier than 2012-03-18 |
| 85 | 3.4.2.3 | Trinh ?? | 4d? | 2012-03-19 | 2012-03-19 | 488d | start no earlier than 2012-03-19 |
| 86 | 3.4.2.4 | Vietmoney/Nguoilaodong | 24d? | 2012-04-12 | 2012-04-19 | 396d | finish no earlier than 2012-04-19 |
| 87 | 3.4.3 | **Banks** | 4d? | 2012-04-02 | 2012-04-02 | 448d |  |
| 88 | 3.4.3.1 | ANZ | 4d? | 2012-04-02 | 2012-04-02 | 448d | start no earlier than 2012-04-02 |
| 89 | 3.4.4 | **Securities Authorities** | 28d? | 2012-03-15 | 2012-03-23 | 472d |  |
| 90 | 3.4.4.1 | HOSE | 28d? | 2012-03-15 | 2012-03-23 | 472d | start no earlier than 2012-03-15 |
| 91 | 3.5 | **IT & Telecom** | 4d? | 2011-03-01 | 2011-03-01 | 1584d |  |
| 92 | 3.5.1 | FPT SMS | 4d? | 2011-03-01 | 2011-03-01 | 1584d |  |
| 93 | 3.5.2 | Anh Tin - iPhone | 4d? | 2011-03-01 | 2011-03-01 | 1584d |  |
| 94 | 3.5.3 | Nam - KHTN iPhone | 4d? | 2011-03-01 | 2011-03-01 | 1584d |  |
| 95 | 3.5.4 | FactSet ?? | 4d? | 2011-03-01 | 2011-03-01 | 1584d |  |
| 96 | 3.5.5 | Bloomberg | 4d? | 2011-03-01 | 2011-03-01 | 1584d |  |
| 97 | 3.5.6 | Co Hien | 4d? | 2011-03-01 | 2011-03-01 | 1584d |  |

| ID | WBS | Task | Duration | Start | Finish | Total slack | Constraint |
| --- | --- | --- | --- | --- | --- | --- | --- |
| 99 | 4 | **Training Lesson** | 1588d? | 2011-03-01 | 2012-09-04 | 0d |  |
| 100 | 4.1 | New comers cours | 4d? | 2011-03-01 | 2011-03-01 | 1584d |  |
| 102 | 4.2 | Tạo cours | 28d | 2012-08-27 | 2012-09-04 | 0d | start no earlier than 2012-08-27 |
| 103 | 4.3 | Liên hệ trung tâm đào tạo | 28d | 2012-08-27 | 2012-09-04 | 0d | start no earlier than 2012-08-27 |
| 106 | 5 | **Fund Seeking** | 4d? | 2011-03-01 | 2011-03-01 | 1584d |  |
| 107 | 5.1 | Business Plan v1.0 | 4d? | 2011-03-01 | 2011-03-01 | 1584d |  |
| 108 | 5.2 | A Au | 4d? | 2011-03-01 | 2011-03-01 | 1584d |  |
| 109 | 5.3 | Mirae | 4d? | 2011-03-01 | 2011-03-01 | 1584d |  |
| 110 | 5.4 | Kien ACB ?? | 4d? | 2011-03-01 | 2011-03-01 | 1584d |  |
| 111 | 5.5 | Truong DH | 4d? | 2011-03-01 | 2011-03-01 | 1584d |  |
| 112 | 5.6 | Co Hien | 4d? | 2011-03-01 | 2011-03-01 | 1584d |  |
